# 资源分配 - 人力资源

How a schedule from MS Project changed from version to version. A marks actual dates.

## Version 1 (saved 2020-05-08)

Note of the change: a

| ID | WBS | Task | Duration | Start | Finish | Predecessors | Constraint |
| --- | --- | --- | --- | --- | --- | --- | --- |
| 1 | 1 | **启动** | 6d | 2020-03-02 | 2020-03-09 |  | as late as possible |
| 2 |  | 任命项目经理 | 1d | 2020-03-02 | 2020-03-02 |  | as late as possible |
| 3 |  | 组件核心团队 | 1d | 2020-03-03 | 2020-03-03 |  | as late as possible |
| 4 |  | 制定里程碑计划 | 1d | 2020-03-04 | 2020-03-04 |  | as late as possible |
| 5 |  | 分析干系人 | 1d | 2020-03-05 | 2020-03-05 |  | as late as possible |
| 6 |  | 制定项目章程 | 1d | 2020-03-06 | 2020-03-06 | 2, 3, 4, 5 | as late as possible |
| 7 |  | 项目启动大会 | 1d | 2020-03-09 | 2020-03-09 | 6 | as late as possible |
| 8 | 2 | **规划** | 57d | 2020-03-10 | 2020-05-27 |  | as late as possible |
| 9 | 2.1 | **规划范围** | 23d | 2020-03-10 | 2020-04-09 |  | as late as possible |
| 10 |  | 制定需求说明书 | 7d | 2020-03-10 | 2020-03-18 | 7 | as late as possible |
| 11 |  | 界面设计 | 5d | 2020-03-19 | 2020-03-25 | 10 | as late as possible |
| 12 |  | 详细设计说明书 | 5d | 2020-03-26 | 2020-04-01 | 10 | as late as possible |
| 13 |  | 范围说明书 | 3d | 2020-04-02 | 2020-04-06 | 10 | as late as possible |
| 14 |  | 创建WBS | 2d | 2020-04-07 | 2020-04-08 | 11, 12, 13 | as late as possible |
| 15 |  | 形成范围基准 | 1d | 2020-04-09 | 2020-04-09 | 14 | as late as possible |
| 16 | 2.2 | **规划时间** | 6d | 2020-04-10 | 2020-04-17 |  | as late as possible |
| 17 |  | 排列工作包顺序 | 1d | 2020-04-10 | 2020-04-10 | 15 | as late as possible |
| 18 |  | 估算资源 | 2d | 2020-04-13 | 2020-04-14 | 17 | as late as possible |
| 19 |  | 估算持续时间 | 1d | 2020-04-15 | 2020-04-15 | 18 | as late as possible |
| 20 |  | 制定进度计划 | 1d | 2020-04-16 | 2020-04-16 | 19 | as late as possible |
| 21 |  | 形成进度计划 | 1d | 2020-04-17 | 2020-04-17 | 20 | as late as possible |
| 22 | 2.3 | **规划成本** | 6d | 2020-04-20 | 2020-04-27 |  | as late as possible |
| 23 |  | 项目成本估算 | 3d | 2020-04-20 | 2020-04-22 | 21 | as late as possible |
| 24 |  | 项目预算 | 2d | 2020-04-23 | 2020-04-24 | 23 | as late as possible |
| 25 |  | 形成范围基准 | 1d | 2020-04-27 | 2020-04-27 | 24 | as late as possible |
| 26 | 2.4 | **规划质量** | 7d | 2020-04-28 | 2020-05-06 |  | as late as possible |
| 27 |  | 制定测试计划 | 2d | 2020-04-28 | 2020-04-29 | 15 | as late as possible |
| 28 |  | 制定测试用例 | 5d | 2020-04-30 | 2020-05-06 | 27 | as late as possible |
| 29 | 2.5 | **规划人力资源** | 4d | 2020-05-06 | 2020-05-11 |  | as late as possible |
| 30 |  | 制定人力资源计划 | 2d | 2020-05-06 | 2020-05-07 | 18 | as late as possible |
| 31 |  | 制定人员配备管理计划 | 2d | 2020-05-08 | 2020-05-11 | 30 | as late as possible |
| 32 | 2.6 | **规划沟通** | 1d | 2020-05-12 | 2020-05-12 |  | as late as possible |
| 33 |  | 制定沟通管理计划 | 1d | 2020-05-12 | 2020-05-12 | 31 | as late as possible |
| 34 | 2.7 | **规划采购** | 7d | 2020-05-13 | 2020-05-21 |  | as late as possible |
| 35 |  | 自制外购分析 | 2d | 2020-05-13 | 2020-05-14 | 18 | as late as possible |
| 36 |  | 制定采购文件 | 5d | 2020-05-15 | 2020-05-21 | 35 | as late as possible |
| 37 | 2.8 | **规划风险** | 4d | 2020-05-22 | 2020-05-27 |  | as late as possible |
| 38 |  | 识别风险 | 1d | 2020-05-22 | 2020-05-22 | 16, 22, 26, 29, 32, 34 | as late as possible |
| 39 |  | 风险分析 | 1d | 2020-05-25 | 2020-05-25 | 38 | as late as possible |
| 40 |  | 制定风险登记册 | 1d | 2020-05-26 | 2020-05-26 | 39 | as late as possible |
| 41 |  | 规划整合 | 1d | 2020-05-27 | 2020-05-27 | 40 | as late as possible |
| 42 | 3 | **执行与监控** | 17d | 2020-05-28 | 2020-06-19 |  | as late as possible |
| 43 |  | 组建项目团队 | 3d | 2020-05-28 | 2020-06-01 | 8 | as late as possible |
| 44 | 3.2 | **项目执行** | 15d | 2020-05-29 | 2020-06-18 |  | as late as possible |
| 45 | 3.2.1 | **用户模块** | 14d | 2020-05-29 | 2020-06-17 |  | as late as possible |
| 46 |  | 注册登录 | 2d | 2020-05-29 | 2020-06-01 | 43 | as late as possible |
| 47 |  | 首页 | 3d | 2020-06-02 | 2020-06-08 | 46 | as late as possible |
| 48 |  | 实时定位 | 1d | 2020-06-04 | 2020-06-04 | 47 | as late as possible |
| 49 |  | 搜索位置 | 1d | 2020-06-05 | 2020-06-05 | 48 | as late as possible |
| 50 |  | 查看停车场信息 | 1d | 2020-06-08 | 2020-06-08 | 47 | as late as possible |
| 51 |  | 绑定车牌号 | 1d | 2020-06-12 | 2020-06-12 | 46 | as late as possible |
| 52 |  | 扫码付款 | 1d | 2020-06-15 | 2020-06-15 | 43 | as late as possible |
| 53 |  | 查看道路情况 | 1d | 2020-06-16 | 2020-06-16 | 47 | as late as possible |
| 54 |  | 个人信息页 | 1d | 2020-06-17 | 2020-06-17 | 46 | as late as possible |
| 55 | 3.2.2 | **停车场提供商** | 5d | 2020-06-12 | 2020-06-18 |  | as late as possible |
| 56 |  | 注册入住 | 2d | 2020-06-12 | 2020-06-15 | 43 | as late as possible |
| 57 |  | 查看停车情况 | 1d | 2020-06-16 | 2020-06-16 | 56 | as late as possible |
| 58 |  | 提供商配置 | 1d | 2020-06-17 | 2020-06-17 | 57 | as late as possible |
| 59 | 3.2.3 | **管理员模块** | 7d | 2020-06-10 | 2020-06-18 |  | as late as possible |
| 60 |  | 提供商审核 | 4d | 2020-06-10 | 2020-06-15 | 58 | as late as possible |
| 61 |  | 统计分析 | 1d | 2020-06-16 | 2020-06-16 | 60 | as late as possible |
| 62 |  | 备份 | 1d | 2020-06-17 | 2020-06-17 | 61 | as late as possible |
| 63 | 3.3 | **项目监控** | 6d | 2020-06-08 | 2020-06-15 |  | as late as possible |
| 64 |  | 各项指标监控 | 1d | 2020-06-12 | 2020-06-12 | 43 | as late as possible |
| 65 |  | 监控评审 | 1d | 2020-06-09 | 2020-06-09 | 64 | as late as possible |
| 66 |  | 变更评审 | 1d | 2020-06-10 | 2020-06-10 | 65 | as late as possible |
| 67 |  | 例会 | 1d | 2020-06-15 | 2020-06-15 | 43 | as late as possible |
| 68 | 3.4 | **管理干系人** | 3d | 2020-06-01 | 2020-06-03 |  | as late as possible |
| 69 |  | 发布项目信息 | 1d | 2020-06-01 | 2020-06-01 | 43 | as late as possible |
| 70 |  | 报告监控指标 | 1d | 2020-06-02 | 2020-06-02 | 43 | as late as possible |

| ID | WBS | Task | Duration | Start | Finish | Predecessors | Constraint |
| --- | --- | --- | --- | --- | --- | --- | --- |
| 71 |  | 干系人沟通 | 1d | 2020-06-03 | 2020-06-03 | 43 | as late as possible |
| 72 | 3.5 | **团队建设** | 12d | 2020-06-04 | 2020-06-19 |  | as late as possible |
| 73 |  | 培训 | 1d | 2020-06-18 | 2020-06-18 | 43 | as late as possible |
| 74 |  | 娱乐活动 | 1d | 2020-06-19 | 2020-06-19 | 43 | as late as possible |
| 75 |  | 沟通 | 1d | 2020-06-16 | 2020-06-16 | 43 | as late as possible |
| 76 |  | 采购 | 1d | 2020-06-04 | 2020-06-04 | 43 | as late as possible |
| 77 |  | 项目验收 | 1d | 2020-06-11 | 2020-06-11 | 44 | as late as possible |
| 78 | 4 | **收尾** | 5d | 2020-06-22 | 2020-06-26 |  | as late as possible |
| 79 |  | 项目终验 | 1d | 2020-06-22 | 2020-06-22 | 77 | as late as possible |
| 80 |  | 结束采购 | 1d | 2020-06-23 | 2020-06-23 | 77 | as late as possible |
| 81 |  | 项目内部收尾 | 1d | 2020-06-24 | 2020-06-24 | 77 | as late as possible |

## Version 2 (saved 2020-05-08)

Last finish stays 2020-06-26.

Changed:

| ID | Task | Other |
| --- | --- | --- |
| 50 | 查看停车场信息 | resources 李梦雪 → 李文柔 |
| 51 | 绑定车牌号 | resources 李梦雪 → 李文柔 |
| 52 | 扫码付款 | resources 李梦雪 → 李文柔 |
| 53 | 查看道路情况 | resources 李梦雪 → 李文柔 |
| 54 | 个人信息页 | resources 李梦雪 → 李文柔 |
